# AgenciaDigital

Schedule from ProjectLibre, 2027-01-04 to 2028-06-16.

## Calendars

- Estandar: Mon-Fri 08:00-12:00, 13:00-17:00; Sat-Sun off.

## Resources

| Resource |
| --- |
| No Asignado |
| Project Manager |
| Project Sponsor |
| Operations Manager |
| Legal & Finance Lead |
| HR Manager |
| Delivery Lead |
| Technology Lead |
| Quality Lead |
| Commercial & Marketing Lead |
| DevOps Engineer |
| QA Engineer |
| Marketing Specialist |
| Web Developer |
| Pilot Project Manager 1 |
| Pilot Project Manager 2 |
| Pilot Project Manager 3 |

## Schedule

| ID | WBS | Task | Duration | Start | Finish | Predecessors | Resources |
| --- | --- | --- | --- | --- | --- | --- | --- |
| 1 | 1 | **Dirección y gestión del proyecto** | 375d? | 2027-01-04 | 2028-06-09 |  |  |
| 2 | 1.1 | Formalización del inicio del proyecto | 5d? | 2027-01-04 | 2027-01-08 |  | Project Manager |
| 3 | 1.2 | Identificación y análisis de stakeholders | 10d? | 2027-01-11 | 2027-01-22 | 2 | Project Manager |
| 4 | 1.3 | Elaboración del plan de dirección del proyecto | 15d? | 2027-01-25 | 2027-02-12 | 3 | Project Manager |
| 5 | 1.4 | Aprobación del plan de dirección | 5d? | 2027-02-15 | 2027-02-19 | 4 | Project Manager |
| 6 | 1.5 | Seguimiento y control integrado | 340d | 2027-02-22 | 2028-06-09 | 5 | Project Manager [20%] |
| 7 | 1.6 | Gestión de cambios y riesgos | 340d | 2027-02-22 | 2028-06-09 | 5 | Project Manager [10%] |
| 8 | 2 | **Modelo operativo y planificación de la implantación** | 55d? | 2027-02-22 | 2027-05-07 |  |  |
| 9 | 2.1 | Análisis del modelo de negocio y requisitos operativos | 10d? | 2027-02-22 | 2027-03-05 | 5 | Operations Manager |
| 10 | 2.2 | Definición de la estructura organizativa | 10d? | 2027-03-08 | 2027-03-19 | 9 | Operations Manager |
| 11 | 2.3 | Diseño del modelo operativo | 15d? | 2027-03-22 | 2027-04-09 | 10 | Operations Manager |
| 12 | 2.4 | Elaboración del plan de implantación | 15d? | 2027-04-12 | 2027-04-30 | 11 | Project Manager |
| 13 | 2.5 | Validación y aprobación del modelo operativo | 5d? | 2027-05-03 | 2027-05-07 | 12 | Project Sponsor |
| 14 | 3 | **Constitución legal, administrativa y financiera** | 75d? | 2027-01-11 | 2027-04-23 |  |  |
| 15 | 3.1 | Definición de la forma jurídica y estructura societaria | 10d? | 2027-01-11 | 2027-01-22 | 2 | Legal & Finance Lead |
| 16 | 3.2 | Preparación de la documentación de constitución | 10d? | 2027-01-25 | 2027-02-05 | 15 | Legal & Finance Lead |
| 17 | 3.3 | Formalización notarial e inscripción registral | 20d? | 2027-02-08 | 2027-03-05 | 16 | Legal & Finance Lead |
| 18 | 3.4 | Altas fiscales, laborales y administrativas | 10d? | 2027-03-08 | 2027-03-19 | 17 | Legal & Finance Lead |
| 19 | 3.5 | Apertura de cuentas y configuración financiera | 10d? | 2027-03-22 | 2027-04-02 | 18 | Legal & Finance Lead |
| 20 | 3.6 | Preparación de contratos y procedimientos administrativos | 15d? | 2027-04-05 | 2027-04-23 | 19 | Legal & Finance Lead |
| 21 | 4 | **Organización y equipo** | 85d? | 2027-03-22 | 2027-07-16 |  |  |
| 22 | 4.1 | Definición de perfiles, roles y responsabilidades | 10d? | 2027-03-22 | 2027-04-02 | 10 | HR Manager |
| 23 | 4.2 | Elaboración del plan de contratación | 10d? | 2027-04-05 | 2027-04-16 | 22 | HR Manager |
| 24 | 4.3 | Selección y contratación del equipo inicial | 30d? | 2027-04-19 | 2027-05-28 | 18, 23 | HR Manager |
| 25 | 4.4 | Incorporación y onboarding del personal | 15d? | 2027-05-31 | 2027-06-18 | 24 | HR Manager |
| 26 | 4.5 | Formación en procesos, herramientas y metodologías | 15d? | 2027-06-21 | 2027-07-09 | 25 | HR Manager |
| 27 | 4.6 | Validación de la preparación operativa del equipo | 5d? | 2027-07-12 | 2027-07-16 | 26 | Operations Manager |

| ID | WBS | Task | Duration | Start | Finish | Predecessors | Resources |
| --- | --- | --- | --- | --- | --- | --- | --- |
| 28 | 5 | **Catálogo de servicios y modelo de delivery** | 80d? | 2027-05-10 | 2027-08-27 |  |  |
| 29 | 5.1 | Definición de las cinco líneas de servicio | 15d? | 2027-05-10 | 2027-05-28 | 13 | Delivery Lead |
| 30 | 5.2 | Diseño del catálogo de servicios y entregables | 15d? | 2027-05-31 | 2027-06-18 | 29 | Delivery Lead |
| 31 | 5.3 | Definición del modelo de estimación y presupuestación | 10d? | 2027-06-21 | 2027-07-02 | 30 | Delivery Lead |
| 32 | 5.4 | Diseño del modelo de delivery y gestión de proyectos | 20d? | 2027-07-05 | 2027-07-30 | 31 | Delivery Lead |
| 33 | 5.5 | Elaboración de plantillas y estándares de entrega | 15d? | 2027-08-02 | 2027-08-20 | 32 | Delivery Lead |
| 34 | 5.6 | Validación y aprobación del catálogo y modelo de delivery | 5d? | 2027-08-23 | 2027-08-27 | 33 | Operations Manager |
| 35 | 6 | **Plataforma tecnológica** | 110d? | 2027-04-12 | 2027-09-10 |  |  |
| 36 | 6.1 | Definición de requisitos tecnológicos y arquitectura de referencia | 15d? | 2027-04-12 | 2027-04-30 | 11 | Technology Lead |
| 37 | 6.2 | Selección de proveedores cloud y herramientas tecnológicas | 10d? | 2027-05-03 | 2027-05-14 | 36 | Technology Lead |
| 38 | 6.3 | Configuración de infraestructura cloud y entornos de trabajo | 20d? | 2027-05-17 | 2027-06-11 | 37 | DevOps Engineer |
| 39 | 6.4 | Implantación de repositorios y pipelines CI/CD | 15d? | 2027-06-14 | 2027-07-02 | 38 | DevOps Engineer |
| 40 | 6.5 | Configuración de herramientas de gestión y documentación | 10d? | 2027-07-05 | 2027-07-16 | 39 | Technology Lead |
| 41 | 6.6 | Implantación de herramientas de testing y control de calidad | 15d? | 2027-07-19 | 2027-08-06 | 40 | QA Engineer |
| 42 | 6.7 | Configuración de monitorización, seguridad y copias de seguridad | 15d? | 2027-08-09 | 2027-08-27 | 41 | DevOps Engineer |
| 43 | 6.8 | Pruebas de integración y validación de la plataforma tecnológica | 10d? | 2027-08-30 | 2027-09-10 | 42 | Technology Lead |
| 44 | 7 | **Procesos, calidad y gobernio** | 100d? | 2027-04-12 | 2027-08-27 |  |  |
| 45 | 7.1 | Definición del modelo de gobierno y responsabilidades | 10d? | 2027-04-12 | 2027-04-23 | 11 | Project Manager |
| 46 | 7.2 | Diseño de procesos de gestión de proyectos | 10d | 2027-04-26 | 2027-05-07 | 45 | Project Manager |
| 47 | 7.3 | Definición de estándares de calidad y criterios de aceptación | 15d | 2027-05-10 | 2027-05-28 | 46 | Project Manager |
| 48 | 7.4 | Diseño de procesos de gestión de riesgos y cambios | 15d | 2027-05-31 | 2027-06-18 | 47 | Quality Lead |
| 49 | 7.5 | Definición de políticas de seguridad y protección de datos | 10d? | 2027-06-21 | 2027-07-02 | 48 | Project Manager |
| 50 | 7.6 | Implantación de procesos de documentación y gestión del conocimiento | 15d? | 2027-07-05 | 2027-07-23 | 49 | Technology Lead |
| 51 | 7.7 | Configuración de indicadores KPI y mecanismos de seguimiento | 15d? | 2027-07-26 | 2027-08-13 | 50 | Quality Lead |
| 52 | 7.8 | Validación y aprobación del sistema de procesos y gobierno | 10d? | 2027-08-16 | 2027-08-27 | 51 | Quality Lead |

| ID | WBS | Task | Duration | Start | Finish | Predecessors | Resources |
| --- | --- | --- | --- | --- | --- | --- | --- |
| 53 | 8 | **Capacidades comerciales y de marketing** | 110d? | 2027-04-12 | 2027-09-10 |  |  |
| 54 | 8.1 | Definición de la estrategia comercial y posicionamiento de mercado | 15d? | 2027-04-12 | 2027-04-30 | 11 | Commercial & Marketing Lead |
| 55 | 8.2 | Desarrollo de la identidad corporativa y materiales de marca | 15d? | 2027-05-03 | 2027-05-21 | 54 | Marketing Specialist |
| 56 | 8.3 | Diseño y desarrollo del sitio web corporativo | 20d? | 2027-05-24 | 2027-06-18 | 55 | Web Developer |
| 57 | 8.4 | Selección y configuración del sistema CRM | 15d? | 2027-06-21 | 2027-07-09 | 56 | Commercial & Marketing Lead |
| 58 | 8.5 | Elaboración de propuestas comerciales y materiales de ventas | 15d? | 2027-07-12 | 2027-07-30 | 57 | Commercial & Marketing Lead |
| 59 | 8.6 | Definición de procesos comerciales y gestión de clientes | 15d? | 2027-08-02 | 2027-08-20 | 58 | Commercial & Marketing Lead |
| 60 | 8.7 | Preparación de canales digitales y herramientas de marketing | 10d? | 2027-08-23 | 2027-09-03 | 59 | Commercial & Marketing Lead |
| 61 | 8.8 | Validación y aprobación de las capacidades comerciales | 5d? | 2027-09-06 | 2027-09-10 | 60 | Marketing Specialist |
| 62 | 9 | **Proyectos piloto** | 240d? | 2027-02-22 | 2028-01-21 |  |  |
| 63 | 9.1 | Confirmación del alcance y requisitos de los tres proyectos piloto | 10d? | 2027-02-22 | 2027-03-05 | 5 | Delivery Lead |
| 64 | 9.2 | Planificación detallada de los proyectos piloto | 15d? | 2027-03-08 | 2027-03-26 | 63 | Delivery Lead |
| 65 | 9.3 | Preparación de equipos y entornos de ejecución | 10d? | 2027-09-13 | 2027-09-24 | 27, 34, 43, 52, 60, 64 | Technology Lead |
| 66 | 9.4 | Ejecución del proyecto piloto 1 | 60d? | 2027-09-27 | 2027-12-17 | 65 | Pilot Project Manager 1 |
| 67 | 9.5 | Ejecución del proyecto piloto 2 | 60d? | 2027-09-27 | 2027-12-17 | 65 | Pilot Project Manager 2 |
| 68 | 9.6 | Ejecución del proyecto piloto 3 | 60d? | 2027-09-27 | 2027-12-17 | 65 | Pilot Project Manager 3 |
| 69 | 9.7 | Evaluación de resultados y recopilación de indicadores KPI | 15d? | 2027-12-20 | 2028-01-07 | 66, 67, 68 | Quality Lead |
| 70 | 9.8 | Validación y aceptación formal de los tres proyectos piloto | 10d? | 2028-01-10 | 2028-01-21 | 69 | Delivery Lead |
| 71 | 10 | **Validación y transición a operaciones** | 65d? | 2028-01-24 | 2028-04-21 |  |  |
| 72 | 10.1 | Evaluación integral de los resultados del proyecto | 10d? | 2028-01-24 | 2028-02-04 | 70 | Project Manager |
| 73 | 10.2 | Verificación del cumplimiento de los objetivos y criterios de aceptación | 10d? | 2028-02-07 | 2028-02-18 | 72 | Quality Lead |
| 74 | 10.3 | Preparación de la documentación de transición a operaciones | 15d? | 2028-02-21 | 2028-03-10 | 73 | Operations Manager |
| 75 | 10.4 | Transferencia de conocimientos y responsabilidades al equipo operativo | 15d? | 2028-03-13 | 2028-03-31 | 74 | Operations Manager |
| 76 | 10.5 | Validación de la preparación operativa de la agencia | 10d? | 2028-04-03 | 2028-04-14 | 75 | Operations Manager |
| 77 | 10.6 | Aprobación formal de la transición a operaciones | 5d? | 2028-04-17 | 2028-04-21 | 76 | Project Sponsor |

| ID | WBS | Task | Duration | Start | Finish | Predecessors | Resources |
| --- | --- | --- | --- | --- | --- | --- | --- |
| 78 | 11 | **Cierre del proyecto** | 40d? | 2028-04-24 | 2028-06-16 |  |  |
| 79 | 11.1 | Verificación final de entregables y compromisos contractuales | 5d? | 2028-04-24 | 2028-04-28 | 77 | Project Manager |
| 80 | 11.2 | Evaluación final del presupuesto, cronograma y desempeño | 5d? | 2028-05-01 | 2028-05-05 | 79 | Project Manager |
| 81 | 11.3 | Elaboración del informe final del proyecto | 10d? | 2028-05-08 | 2028-05-19 | 80 | Project Manager |
| 82 | 11.4 | Documentación de lecciones aprendidas y recomendaciones | 5d? | 2028-05-22 | 2028-05-26 | 81 | Project Manager |
| 83 | 11.5 | Cierre administrativo, financiero y contractual | 10d? | 2028-05-29 | 2028-06-09 | 82 | Legal & Finance Lead |
| 84 | 11.6 | Presentación y aprobación del acta de cierre del proyecto | 5d? | 2028-06-12 | 2028-06-16 | 83 | Project Sponsor |
